# translational_duke

Schedule from MS Project, 2006-05-01 to 2006-11-01.
Duke University

## Calendars

- Standard: Mon-Fri 08:00-12:00, 13:00-17:00; Sat-Sun off.

## Resources

| Resource |
| --- |
| Patrick |
| Jeff |
| SB |
| Raj |
| Bob |
| Ram |
| Jamie |
| Everyone |
| Wilma? |
| Wilma |
| Bioinformatics |

## Schedule

| ID | WBS | Task | Duration | Start | Finish | Predecessors | Total slack | Free slack | Constraint | Resources | Work |
| --- | --- | --- | --- | --- | --- | --- | --- | --- | --- | --- | --- |
| 1 | 1 | **Phase I** | 133d | 2006-05-01 | 2006-11-01 |  | 0d |  |  |  | 5488h |
| 2 | 1.1 | **Meetings** | 107d | 2006-05-01 | 2006-09-26 |  | 26d |  |  |  | 56h |
| 3 | 1.1.1 | Project kickoff | 1d | 2006-05-01 | 2006-05-01 |  | 131d | 0d |  | Jamie; Bob; Patrick | 24h |
| 4 | 1.1.2 | First F2F | 2d | 2006-05-24 | 2006-05-25 |  | 114d |  | finish no earlier than 2006-05-25 | Everyone | 16h |
| 5 | 1.1.3 | Second F2F | 2d | 2006-09-25 | 2006-09-26 |  | 26d |  | start no earlier than 2006-09-25 | Everyone | 16h |
| 6 | 1.2 | **Management** | 24d | 2006-05-01 | 2006-06-01 |  | 109d |  |  |  | 1456h |
| 7 | 1.2.1 | Install MS Project | 10d | 2006-05-01 | 2006-05-12 |  | 123d |  |  | Jeff | 80h |
| 8 | 1.2.2 | Draft project management plan | 22d | 2006-05-03 | 2006-06-01 |  | 109d |  | finish no earlier than 2006-06-01 | Patrick; Bob; Ram | 528h |
| 9 | 1.2.3 | Draft communications plan | 11d | 2006-05-18 | 2006-06-01 |  | 109d |  | finish no earlier than 2006-06-01 | Patrick; Bob; Ram | 264h |
| 10 | 1.2.4 | Draft risk management matrix | 11d | 2006-05-18 | 2006-06-01 |  | 109d |  | finish no earlier than 2006-06-01 | Patrick; Ram | 176h |
| 11 | 1.2.5 | Draft test plan | 11d | 2006-05-18 | 2006-06-01 |  | 109d |  | finish no earlier than 2006-06-01 | Patrick; Bob | 176h |
| 12 | 1.2.6 | Setup GForge | 1d | 2006-05-08 | 2006-05-08 |  | 122d | 0d | start no earlier than 2006-05-08 | Patrick | 8h |
| 13 | 1.2.7 | Setup development environment | 5d | 2006-05-09 | 2006-05-15 | 12 | 122d |  | finish no earlier than 2006-05-15 | Patrick | 40h |
| 14 | 1.2.8 | **Setup testbed** | 11d | 2006-05-01 | 2006-05-15 |  | 122d |  |  | Jeff | 184h |
| 15 | 1.2.8.1 | Purchase testbed | 10d | 2006-05-01 | 2006-05-12 |  | 122d | 0d |  | Jeff | 80h |
| 16 | 1.2.8.2 | Add testbed to backup cycle | 1d | 2006-05-15 | 2006-05-15 | 15 | 122d |  |  | Jeff | 8h |
| 17 | 1.2.8.3 | Image testbed after basic environment is set up | 1d | 2006-05-15 | 2006-05-15 | 15 | 122d |  |  | Jeff | 8h |
| 18 | 1.3 | **Use case definition** | 47d | 2006-05-24 | 2006-07-27 |  | 47d |  |  |  | 1472h |
| 19 | 1.3.1 | Define problem scenarios | 2d | 2006-05-24 | 2006-05-25 |  | 47d | 0d | finish no earlier than 2006-05-25 | Raj; Bob | 32h |
| 20 | 1.3.2 | Help draft use case document | 45d | 2006-05-26 | 2006-07-27 | 19 | 69d |  | start no earlier than 2006-05-01 | Patrick; Bob | 720h |
| 21 | 1.3.3 | Help draft requirements and sepcifications | 45d | 2006-05-26 | 2006-07-27 | 19 | 69d |  | finish no earlier than 2006-06-30 | Patrick; Bob | 720h |
| 22 | 1.4 | **Dataset preparation** | 17d | 2006-05-26 | 2006-06-19 | 19 | 47d | 0d |  |  | 904h |
| 23 | 1.4.1 | **Dataset acquisition** | 7d | 2006-05-26 | 2006-06-05 |  | 47d | 0d |  | Raj; Bob | 184h |
| 24 | 1.4.1.1 | Determine available datasets | 1d | 2006-05-26 | 2006-05-26 |  | 47d | 0d | finish no earlier than 2006-05-25 | Raj; Bob | 16h |
| 25 | 1.4.1.2 | Match datasets to use cases | 1d | 2006-05-29 | 2006-05-29 | 24 | 47d | 0d |  | Raj; Bob | 16h |
| 26 | 1.4.1.3 | Fill out IRB forms | 5d | 2006-05-30 | 2006-06-05 | 25 | 47d |  |  | Bob | 40h |

| ID | WBS | Task | Duration | Start | Finish | Predecessors | Total slack | Free slack | Resources | Work |
| --- | --- | --- | --- | --- | --- | --- | --- | --- | --- | --- |
| 27 | 1.4.2 | **Pathology dataset** | 10d | 2006-06-06 | 2006-06-19 | 23 | 47d |  | Wilma | 240h |
| 28 | 1.4.2.1 | Document CDE usage | 5d | 2006-06-06 | 2006-06-12 |  | 52d |  | Wilma | 40h |
| 29 | 1.4.2.2 | Dataset deidentification | 10d | 2006-06-06 | 2006-06-19 |  | 47d |  | Wilma | 80h |
| 30 | 1.4.2.3 | Expose database | 5d | 2006-06-06 | 2006-06-12 |  | 52d |  | Wilma | 40h |
| 31 | 1.4.3 | **Clinical dataset** | 10d | 2006-06-06 | 2006-06-19 | 23 | 47d |  | Wilma | 240h |
| 32 | 1.4.3.1 | CDE document | 5d | 2006-06-06 | 2006-06-12 |  | 52d |  | Wilma | 40h |
| 33 | 1.4.3.2 | Dataset deidentification | 10d | 2006-06-06 | 2006-06-19 |  | 47d |  | Wilma | 80h |
| 34 | 1.4.3.3 | Expose database | 5d | 2006-06-06 | 2006-06-12 |  | 52d |  | Wilma | 40h |
| 35 | 1.4.4 | **Tissue bank dataset** | 10d | 2006-06-06 | 2006-06-19 | 23 | 47d |  | Wilma | 240h |
| 36 | 1.4.4.1 | CDE document | 5d | 2006-06-06 | 2006-06-12 |  | 52d |  | Wilma | 40h |
| 37 | 1.4.4.2 | Dataset deidentification | 10d | 2006-06-06 | 2006-06-19 |  | 47d |  | Wilma | 80h |
| 38 | 1.4.4.3 | Expose database | 5d | 2006-06-06 | 2006-06-12 |  | 52d |  | Wilma | 40h |
| 39 | 1.5 | **Tool installation** | 50d | 2006-06-20 | 2006-08-28 | 22 | 47d |  |  | 1200h |
| 40 | 1.5.1 | **Pathology dataset** | 50d | 2006-06-20 | 2006-08-28 |  | 47d |  |  | 400h |
| 41 | 1.5.1.1 | Document CDE extension | 10d | 2006-06-20 | 2006-07-03 |  | 47d | 0d | Wilma | 80h |
| 42 | 1.5.1.2 | Extend model | 10d | 2006-07-04 | 2006-07-17 | 41 | 47d | 0d | Wilma | 80h |
| 43 | 1.5.1.3 | Apply model to tool | 10d | 2006-07-18 | 2006-07-31 | 42 | 47d | 0d | Bioinformatics | 80h |
| 44 | 1.5.1.4 | Install services | 10d | 2006-08-01 | 2006-08-14 | 43 | 47d | 0d | Bioinformatics | 80h |
| 45 | 1.5.1.5 | Install tool | 10d | 2006-08-15 | 2006-08-28 | 44 | 47d |  | Bioinformatics | 80h |
| 46 | 1.5.2 | **Clinical dataset** | 50d | 2006-06-20 | 2006-08-28 |  | 47d |  |  | 400h |
| 47 | 1.5.2.1 | Document CDE extension | 10d | 2006-06-20 | 2006-07-03 |  | 47d | 0d | Wilma | 80h |
| 48 | 1.5.2.2 | Extend model | 10d | 2006-07-04 | 2006-07-17 | 47 | 47d | 0d | Wilma | 80h |
| 49 | 1.5.2.3 | Apply model to tool | 10d | 2006-07-18 | 2006-07-31 | 48 | 47d | 0d | Bioinformatics | 80h |
| 50 | 1.5.2.4 | Install services | 10d | 2006-08-01 | 2006-08-14 | 49 | 47d | 0d | Bioinformatics | 80h |
| 51 | 1.5.2.5 | Install tool | 10d | 2006-08-15 | 2006-08-28 | 50 | 47d |  | Bioinformatics | 80h |

| ID | WBS | Task | Duration | Start | Finish | Predecessors | Total slack | Free slack | Constraint | Resources | Work |
| --- | --- | --- | --- | --- | --- | --- | --- | --- | --- | --- | --- |
| 52 | 1.5.3 | **Tissue bank dataset** | 50d | 2006-06-20 | 2006-08-28 |  | 47d |  |  |  | 400h |
| 53 | 1.5.3.1 | Document CDE extension | 10d | 2006-06-20 | 2006-07-03 |  | 47d | 0d |  | Wilma | 80h |
| 54 | 1.5.3.2 | Extend model | 10d | 2006-07-04 | 2006-07-17 | 53 | 47d | 0d |  | Wilma | 80h |
| 55 | 1.5.3.3 | Apply model to tool | 10d | 2006-07-18 | 2006-07-31 | 54 | 47d | 0d |  | Bioinformatics | 80h |
| 56 | 1.5.3.4 | Install services | 10d | 2006-08-01 | 2006-08-14 | 55 | 47d | 0d |  | Bioinformatics | 80h |
| 57 | 1.5.3.5 | Install tool | 10d | 2006-08-15 | 2006-08-28 | 56 | 47d |  |  | Bioinformatics | 80h |
| 58 | 1.6 | **Deliverables** | 132d | 2006-05-02 | 2006-11-01 | 3 | 0d |  |  |  | 160h |
| 59 | 1.6.1 | Submit project management plan | 1d | 2006-06-01 | 2006-06-01 |  | 109d |  | start no earlier than 2006-06-01 | Patrick | 8h |
| 60 | 1.6.2 | Submit communications plan | 1d | 2006-06-01 | 2006-06-01 |  | 109d |  | start no earlier than 2006-06-01 | Patrick | 8h |
| 61 | 1.6.3 | Submit risk management matrix | 1d | 2006-06-01 | 2006-06-01 |  | 109d |  | start no earlier than 2006-06-01 | Patrick | 8h |
| 62 | 1.6.4 | Submit draft use case document | 1d | 2006-07-03 | 2006-07-03 |  | 87d |  | start no earlier than 2006-07-03 | Patrick | 8h |
| 63 | 1.6.5 | Submit final use case document | 1d | 2006-08-01 | 2006-08-01 |  | 66d |  | start no earlier than 2006-08-01 | Patrick | 8h |
| 64 | 1.6.6 | Submit draft requirements and specifications document | 1d | 2006-06-01 | 2006-06-01 |  | 109d |  | start no earlier than 2006-06-01 | Patrick | 8h |
| 65 | 1.6.7 | Submit final requirements and specifications document | 1d | 2006-07-03 | 2006-07-03 |  | 87d |  | start no earlier than 2006-07-03 | Patrick | 8h |
| 66 | 1.6.8 | Submit draft UML model | 1d | 2006-08-01 | 2006-08-01 |  | 66d |  | start no earlier than 2006-08-01 | Patrick | 8h |
| 67 | 1.6.9 | Submit draft API | 1d | 2006-11-01 | 2006-11-01 |  | 0d |  | start no earlier than 2006-11-01 | Patrick | 8h |
| 68 | 1.6.10 | Submit XMI file | 1d | 2006-10-02 | 2006-10-02 |  | 22d |  | start no earlier than 2006-10-02 | Patrick | 8h |
| 69 | 1.6.11 | Submit CDE use report | 1d | 2006-11-01 | 2006-11-01 |  | 0d |  | start no earlier than 2006-11-01 | Patrick | 8h |
| 70 | 1.6.12 | Submit draft test approach | 1d | 2006-06-01 | 2006-06-01 |  | 109d |  | start no earlier than 2006-06-01 | Patrick | 8h |
| 71 | 1.6.13 | Submit final test approach | 1d | 2006-07-03 | 2006-07-03 |  | 87d |  | start no earlier than 2006-07-03 | Patrick | 8h |
| 72 | 1.6.14 | Submit draft datasets | 1d | 2006-08-01 | 2006-08-01 |  | 66d |  | start no earlier than 2006-08-01 | Patrick | 8h |
| 73 | 1.6.15 | Submit final datasets | 1d | 2006-11-01 | 2006-11-01 |  | 0d |  | start no earlier than 2006-11-01 | Patrick | 8h |
| 74 | 1.6.16 | Submit draft prototype code | 1d | 2006-08-01 | 2006-08-01 |  | 66d |  | start no earlier than 2006-08-01 | Patrick | 8h |
| 75 | 1.6.17 | Submit final prototype code | 1d | 2006-11-01 | 2006-11-01 |  | 0d |  | start no earlier than 2006-11-01 | Patrick | 8h |
| 76 | 1.6.18 | Submit testing report for draft prototype | 1d | 2006-08-01 | 2006-08-01 |  | 66d |  | start no earlier than 2006-08-01 | Patrick | 8h |
| 77 | 1.6.19 | Submit testing report for final prototype | 1d | 2006-11-01 | 2006-11-01 |  | 0d |  | start no earlier than 2006-11-01 | Patrick | 8h |
| 78 | 1.6.20 | Submit technical/architectural guide | 1d | 2006-05-02 | 2006-05-02 |  | 131d |  |  | Patrick | 8h |

| ID | WBS | Task | Duration | Start | Finish | Predecessors | Total slack | Resources | Work |
| --- | --- | --- | --- | --- | --- | --- | --- | --- | --- |
| 79 | 1.7 | **Testing** | 30d | 2006-05-26 | 2006-07-06 |  | 84d |  | 240h |
| 80 | 1.7.1 | Define queries for use cases | 30d | 2006-05-26 | 2006-07-06 | 19 | 84d | Patrick | 240h |
| 81 | 1.7.2 | Write unit tests for use cases | 30d | 2006-05-26 | 2006-07-06 | 19 | 84d |  |  |
| 82 | 2 | **Phase II** | 1d? | 2006-05-01 | 2006-05-01 |  | 132d |  |  |
| 83 | 2.1 | Management | 1d? | 2006-05-01 | 2006-05-01 |  | 132d |  |  |
| 84 | 2.2 | Use case definition | 1d? | 2006-05-01 | 2006-05-01 |  | 132d |  |  |
| 85 | 2.3 | Dataset migration | 1d? | 2006-05-01 | 2006-05-01 |  | 132d |  |  |
| 86 | 2.4 | Tool installation | 1d? | 2006-05-01 | 2006-05-01 |  | 132d |  |  |
| 87 | 2.5 | Testing | 1d? | 2006-05-01 | 2006-05-01 |  | 132d |  |  |
